Schedule from MS Project, 2021-03-01 to 2021-08-02, status date 2021-02-27, costs in р..
Microsoft
Команда разработчиков из 16 человек занимается созданием карты города на основе собственного модуля отображения. Проект должен быть завершен в течение 6 месяцев. Бюджет проекта: 50 000 рублей

## Calendars

- Стандартный: Mon-Fri 09:00-13:00, 14:00-18:00; Sat-Sun off. Exceptions (off unless hours are given): 2021-03-08 (Международный женский день), 2021-05-03 (Майские каникулы), 2021-05-09 to 2021-05-10 (День победы), 2021-06-12 to 2021-06-14 (День России).

## Resources

| Resource | Group | Rate | Cost per use |
| --- | --- | --- | --- |
| Ведущий программист | Программирование | 10 | 100 |
| Программист#1 | Программирование | 7 | 50 |
| Программист#2 | Программирование | 7 | 50 |
| Программист#3 | Программирование | 7 | 50 |
| Программист#4 | Программирование | 7 | 50 |
| Системный аналитик | Анализ | 20 | 300 |
| Художник-дизайнер | Дизайн | 8 | 70 |
| Технический писатель | Документация | 5 | 20 |
| Web-дизайнер | Internet | 7 | 50 |
| 3D аниматор | Дизайн | 8 | 70 |
| Мультимедиа-корреспондент | М-медиа | 3 | 20 |
| Наборщик данных#1 | Ввод данных | 2 | 10 |
| Наборщик данных#2 | Ввод данных | 2 | 10 |
| Наборщик данных#3 | Ввод данных | 2 | 10 |
| Наборщик данных#4 | Ввод данных | 2 | 10 |
| Наборщик данных#5 | Ввод данных | 2 | 10 |
| Дополнительный сервер | Аренда | 2 |  |

## Schedule

| ID | WBS | Task | Type | Duration | Start | Finish | Predecessors | Baseline start | Baseline finish | Baseline duration | Total slack | Free slack | Resources | Work | Cost | Baseline cost |
| --- | --- | --- | --- | --- | --- | --- | --- | --- | --- | --- | --- | --- | --- | --- | --- | --- |
| 1 | 1 | Начало проекта | milestone | 0w | 2021-03-01 08:00 | 2021-03-01 08:00 |  | 2021-03-01 08:00 | 2021-03-01 08:00 | 0w | 40.47d | 0.12d |  |  |  |  |
| 2 | 2 | **Создание интерфейса** |  | 80.97d | 2021-03-01 10:00 | 2021-06-28 09:44 | 1 | 2021-03-01 10:00 | 2021-06-28 09:44 | 80.97d | 0d |  |  | 560h | 5,550 | 5,550 |
| 3 | 2.1 | **Разработка дизайна интерфейса** |  | 25.62d | 2021-03-01 10:00 | 2021-04-06 16:00 |  | 2021-03-01 10:00 | 2021-04-06 16:00 | 25.62d | 40.34d | 0d |  | 320h | 2,770 | 2,770 |
| 4 | 2.1.1 | Разработка 2D графических элементов |  | 3w | 2021-03-01 10:00 | 2021-03-23 13:00 |  | 2021-03-01 10:00 | 2021-03-23 13:00 | 3w | 40.34d | 0d | Художник-дизайнер | 120h | 1,030 | 1,030 |
| 5 | 2.1.2 | Разработка 3D графичиских элементов |  | 2w | 2021-03-01 10:00 | 2021-03-16 12:00 | 4SS | 2021-03-01 10:00 | 2021-03-16 12:00 | 2w | 40.34d | 0d | 3D аниматор | 80h | 710 | 710 |
| 6 | 2.1.3 | Создание заставки |  | 3w | 2021-03-16 12:00 | 2021-04-06 16:00 | 5 | 2021-03-16 12:00 | 2021-04-06 16:00 | 3w | 40.34d |  | 3D аниматор | 120h | 1,030 | 1,030 |
| 7 | 2.2 | Программирование интерфейса |  | 3w | 2021-06-04 09:44 | 2021-06-28 09:44 | 3, 12 | 2021-06-04 09:44 | 2021-06-28 09:44 | 3w | 0d |  | Программист#3; Программист#4 | 240h | 1,780 | 1,780 |
| 8 | 3 | **Построение базы объектов** |  | 85.25d | 2021-03-23 14:00 | 2021-07-23 16:00 |  | 2021-03-23 14:00 | 2021-07-23 16:00 | 85.25d | 5.42d |  | Дополнительный сервер | 5650h | 15,390 | 15,390 |
| 9 | 3.1 | Анализ и построение структуры базы объектов |  | 2w | 2021-03-23 14:00 | 2021-04-06 16:00 |  | 2021-03-23 14:00 | 2021-04-06 16:00 | 2w | 5.42d | 0d | Системный аналитик | 80h | 1,900 | 1,900 |
| 10 | 3.2 | Программирование средств обработки базы объектов |  | 3w | 2021-04-06 16:00 | 2021-04-27 16:00 | 9 | 2021-04-06 16:00 | 2021-04-27 16:00 | 3w | 5.42d | 0d | Программист#3; Программист#4 | 240h | 1,780 | 1,780 |
| 11 | 3.3 | Наполнение базы объектов |  | 12w | 2021-04-27 16:00 | 2021-07-23 16:00 | 10 | 2021-04-27 16:00 | 2021-07-23 16:00 | 12w | 5.42d |  | Наборщик данных#1; Наборщик данных#2; Наборщик данных#3; Наборщик данных#4; Наборщик данных#5 | 2400h | 4,850 | 4,850 |
| 12 | 4 | **Создание ядра GIS** |  | 65.97d | 2021-03-01 10:00 | 2021-06-04 09:44 |  | 2021-03-01 10:00 | 2021-06-04 09:44 | 65.97d | 0d |  |  | 1880h | 16,998.62 | 16,998.62 |
| 13 | 4.1 | Анализ и проектирование ядра |  | 1w | 2021-03-01 10:00 | 2021-03-09 11:00 |  | 2021-03-01 10:00 | 2021-03-09 11:00 | 1w | 0d |  | Ведущий программист; Системный аналитик; Программист#1; Программист#2; Программист#3; Программист#4 | 240h | 2,920 | 2,920 |
| 14 | 4.2 | Создание модели ядра |  | 2.07w | 2021-03-09 11:00 | 2021-03-23 14:49 | 13 | 2021-03-09 11:00 | 2021-03-23 14:49 | 2.07w | 0d |  | Ведущий программист; Программист#1; Программист#2; Программист#3; Программист#4 | 400h | 3,336.46 | 3,336.46 |
| 15 | 4.3 | Тестирование модели ядра |  | 1w | 2021-03-23 14:49 | 2021-03-30 14:49 | 14 | 2021-03-23 14:49 | 2021-03-30 14:49 | 1w | 0d |  | Программист#1 | 40h | 330 | 330 |
| 16 | 4.4 | Создание рабочей версии ядра |  | 9.1w | 2021-03-30 14:49 | 2021-06-04 09:44 | 15 | 2021-03-30 14:49 | 2021-06-04 09:44 | 9.1w | 0d |  | Ведущий программист; Программист#1; Программист#2; Программист#3; Программист#4 | 1200h | 9,412.16 | 9,412.16 |
| 17 | 5 | Создание мультимедиа - наполнения |  | 6w | 2021-04-06 16:00 | 2021-05-21 13:00 | 3 | 2021-04-06 16:00 | 2021-05-21 13:00 | 6w | 49.67d |  | Мультимедиа-корреспондент | 240h | 740 | 740 |
| 18 | 6 | Создание справочной системы |  | 2w | 2021-06-28 12:44 | 2021-07-22 11:44 | 7 | 2021-07-12 10:00 | 2021-07-26 12:00 | 2w | 6.83d |  | Технический писатель | 80h | 420 | 420 |
| 19 | 7 | **Создание руководства пользователя** |  | 18.12d | 2021-06-11 09:44 | 2021-07-08 10:44 | 7FS-10d | 2021-06-11 09:44 | 2021-07-08 10:44 | 18.12d | 0d |  |  | 160h | 1,010 | 1,010 |
| 20 | 7.1 | Разработка дизайна руководства |  | 1w | 2021-06-11 09:44 | 2021-06-21 14:44 |  | 2021-06-11 09:44 | 2021-06-21 14:44 | 1w | 0d |  | Художник-дизайнер | 40h | 390 | 390 |
| 21 | 7.2 | Написание руководства пользователя |  | 3w | 2021-06-16 09:44 | 2021-07-08 10:44 | 20SS+2d | 2021-06-16 09:44 | 2021-07-08 10:44 | 3w | 0d |  | Технический писатель | 120h | 620 | 620 |
| 22 | 8 | **Создание web - сайта и поддержка** |  | 24.88d | 2021-06-16 09:44 | 2021-07-20 17:44 |  | 2021-06-16 09:44 | 2021-07-20 17:44 | 24.88d | 0d |  |  | 248h | 2,106 | 2,106 |
| 23 | 8.1 | Разработка структуры сайта |  | 1d | 2021-06-16 09:44 | 2021-06-17 09:44 | 21SS | 2021-06-16 09:44 | 2021-06-17 09:44 | 1d | 0d |  | Web-дизайнер | 8h | 106 | 106 |
| 24 | 8.2 | Разработка дизайна сайта |  | 1.4w | 2021-06-17 09:44 | 2021-06-28 16:44 | 23 | 2021-06-17 09:44 | 2021-06-28 16:44 | 1.4w | 0d |  | 3D аниматор; Web-дизайнер; Художник-дизайнер | 120h | 1,110 | 1,110 |
| 25 | 8.3 | Наполнение сайта |  | 3w | 2021-06-28 16:44 | 2021-07-20 17:44 | 24 | 2021-06-28 16:44 | 2021-07-20 17:44 | 3w | 0d |  | Web-дизайнер | 120h | 890 | 890 |
| 26 | 9 | Тестирование сайта |  | 2.59w | 2021-07-13 17:44 | 2021-08-02 10:23 | 22FS-1w | 2021-07-13 17:44 | 2021-08-02 10:23 | 2.59w | 0d |  | Ведущий программист; Программист#1; Программист#2; Программист#3; Программист#4 | 480h | 3,940.97 | 3,940.97 |
| 27 | 10 | Сдача сайта в эксплуатацию | milestone | 0w | 2021-08-02 10:23 | 2021-08-02 10:23 | 26 | 2021-08-02 10:23 | 2021-08-02 10:23 | 0w | 0d |  |  |  |  |  |

| ID | WBS | Task | Duration | Start | Finish | Baseline start | Baseline finish | Baseline duration | Total slack | Constraint | Resources | Work | Cost | Baseline cost |
| --- | --- | --- | --- | --- | --- | --- | --- | --- | --- | --- | --- | --- | --- | --- |
| 28 | 11 | **Совещание** | 106.12d | 2021-03-01 09:00 | 2021-08-02 10:00 | 2021-03-01 09:00 | 2021-08-02 10:00 | 106.12d | 0.05d |  |  | 1010h | 1,403 | 1,403 |
| 29 | 11.1 | Совещание 1 | 1h | 2021-03-01 09:00 | 2021-03-01 10:00 | 2021-03-01 09:00 | 2021-03-01 10:00 | 1h | 106.05d | start no earlier than 2021-03-01 08:00 | 3D аниматор; Web-дизайнер; Ведущий программист; Мультимедиа-корреспондент; Системный аналитик; Технический писатель; Художник-дизайнер | 7h | 61 | 61 |
| 30 | 11.2 | Совещание 2 | 1h | 2021-03-09 09:00 | 2021-03-09 10:00 | 2021-03-09 09:00 | 2021-03-09 10:00 | 1h | 101.05d | start no earlier than 2021-03-08 08:00 | 3D аниматор; Web-дизайнер; Ведущий программист; Мультимедиа-корреспондент; Системный аналитик; Технический писатель; Художник-дизайнер | 7h | 61 | 61 |
| 31 | 11.3 | Совещание 3 | 1h | 2021-03-15 09:00 | 2021-03-15 10:00 | 2021-03-15 09:00 | 2021-03-15 10:00 | 1h | 97.05d | start no earlier than 2021-03-15 08:00 | 3D аниматор; Web-дизайнер; Ведущий программист; Мультимедиа-корреспондент; Системный аналитик; Технический писатель; Художник-дизайнер | 7h | 61 | 61 |
| 32 | 11.4 | Совещание 4 | 1h | 2021-03-22 09:00 | 2021-03-22 10:00 | 2021-03-22 09:00 | 2021-03-22 10:00 | 1h | 92.05d | start no earlier than 2021-03-22 08:00 | 3D аниматор; Web-дизайнер; Ведущий программист; Мультимедиа-корреспондент; Системный аналитик; Технический писатель; Художник-дизайнер | 7h | 61 | 61 |
| 33 | 11.5 | Совещание 5 | 1h | 2021-03-29 09:00 | 2021-03-29 10:00 | 2021-03-29 09:00 | 2021-03-29 10:00 | 1h | 87.05d | start no earlier than 2021-03-29 08:00 | 3D аниматор; Web-дизайнер; Ведущий программист; Мультимедиа-корреспондент; Системный аналитик; Технический писатель; Художник-дизайнер | 7h | 61 | 61 |
| 34 | 11.6 | Совещание 6 | 1h | 2021-04-05 09:00 | 2021-04-05 10:00 | 2021-04-05 09:00 | 2021-04-05 10:00 | 1h | 82.05d | start no earlier than 2021-04-05 08:00 | 3D аниматор; Web-дизайнер; Ведущий программист; Мультимедиа-корреспондент; Системный аналитик; Технический писатель; Художник-дизайнер | 7h | 61 | 61 |
| 35 | 11.7 | Совещание 7 | 1h | 2021-04-12 09:00 | 2021-04-12 10:00 | 2021-04-12 09:00 | 2021-04-12 10:00 | 1h | 77.05d | start no earlier than 2021-04-12 08:00 | 3D аниматор; Web-дизайнер; Ведущий программист; Мультимедиа-корреспондент; Системный аналитик; Технический писатель; Художник-дизайнер | 7h | 61 | 61 |
| 36 | 11.8 | Совещание 8 | 1h | 2021-04-19 09:00 | 2021-04-19 10:00 | 2021-04-19 09:00 | 2021-04-19 10:00 | 1h | 72.05d | start no earlier than 2021-04-19 08:00 | 3D аниматор; Web-дизайнер; Ведущий программист; Мультимедиа-корреспондент; Системный аналитик; Технический писатель; Художник-дизайнер | 7h | 61 | 61 |
| 37 | 11.9 | Совещание 9 | 1h | 2021-04-26 09:00 | 2021-04-26 10:00 | 2021-04-26 09:00 | 2021-04-26 10:00 | 1h | 67.05d | start no earlier than 2021-04-26 08:00 | 3D аниматор; Web-дизайнер; Ведущий программист; Мультимедиа-корреспондент; Системный аналитик; Технический писатель; Художник-дизайнер | 7h | 61 | 61 |
| 38 | 11.10 | Совещание 10 | 1h | 2021-05-04 09:00 | 2021-05-04 10:00 | 2021-05-04 09:00 | 2021-05-04 10:00 | 1h | 62.05d | start no earlier than 2021-05-03 08:00 | 3D аниматор; Web-дизайнер; Ведущий программист; Мультимедиа-корреспондент; Системный аналитик; Технический писатель; Художник-дизайнер | 7h | 61 | 61 |
| 39 | 11.11 | Совещание 11 | 1h | 2021-05-11 09:00 | 2021-05-11 10:00 | 2021-05-11 09:00 | 2021-05-11 10:00 | 1h | 58.05d | start no earlier than 2021-05-10 08:00 | 3D аниматор; Web-дизайнер; Ведущий программист; Мультимедиа-корреспондент; Системный аналитик; Технический писатель; Художник-дизайнер | 7h | 61 | 61 |
| 40 | 11.12 | Совещание 12 | 1h | 2021-05-17 09:00 | 2021-05-17 10:00 | 2021-05-17 09:00 | 2021-05-17 10:00 | 1h | 54.05d | start no earlier than 2021-05-17 08:00 | 3D аниматор; Web-дизайнер; Ведущий программист; Мультимедиа-корреспондент; Системный аналитик; Технический писатель; Художник-дизайнер | 7h | 61 | 61 |
| 41 | 11.13 | Совещание 13 | 1h | 2021-05-24 09:00 | 2021-05-24 10:00 | 2021-05-24 09:00 | 2021-05-24 10:00 | 1h | 49.05d | start no earlier than 2021-05-24 08:00 | 3D аниматор; Web-дизайнер; Ведущий программист; Мультимедиа-корреспондент; Системный аналитик; Технический писатель; Художник-дизайнер | 7h | 61 | 61 |
| 42 | 11.14 | Совещание 14 | 1h | 2021-05-31 09:00 | 2021-05-31 10:00 | 2021-05-31 09:00 | 2021-05-31 10:00 | 1h | 44.05d | start no earlier than 2021-05-31 08:00 | 3D аниматор; Web-дизайнер; Ведущий программист; Мультимедиа-корреспондент; Системный аналитик; Технический писатель; Художник-дизайнер | 7h | 61 | 61 |
| 43 | 11.15 | Совещание 15 | 1h | 2021-06-07 09:00 | 2021-06-07 10:00 | 2021-06-07 09:00 | 2021-06-07 10:00 | 1h | 39.05d | start no earlier than 2021-06-07 08:00 | 3D аниматор; Web-дизайнер; Ведущий программист; Мультимедиа-корреспондент; Системный аналитик; Технический писатель; Художник-дизайнер | 7h | 61 | 61 |
| 44 | 11.16 | Совещание 16 | 1h | 2021-06-15 09:00 | 2021-06-15 10:00 | 2021-06-15 09:00 | 2021-06-15 10:00 | 1h | 34.05d | start no earlier than 2021-06-14 08:00 | 3D аниматор; Web-дизайнер; Ведущий программист; Мультимедиа-корреспондент; Системный аналитик; Технический писатель; Художник-дизайнер | 7h | 61 | 61 |
| 45 | 11.17 | Совещание 17 | 1h | 2021-06-21 09:00 | 2021-06-21 10:00 | 2021-06-21 09:00 | 2021-06-21 10:00 | 1h | 30.05d | start no earlier than 2021-06-21 08:00 | 3D аниматор; Web-дизайнер; Ведущий программист; Мультимедиа-корреспондент; Системный аналитик; Технический писатель; Художник-дизайнер | 7h | 61 | 61 |
| 46 | 11.18 | Совещание 18 | 1h | 2021-06-28 09:00 | 2021-06-28 10:00 | 2021-06-28 09:00 | 2021-06-28 10:00 | 1h | 25.05d | start no earlier than 2021-06-28 08:00 | 3D аниматор; Web-дизайнер; Ведущий программист; Мультимедиа-корреспондент; Системный аналитик; Технический писатель; Художник-дизайнер | 7h | 61 | 61 |
| 47 | 11.19 | Совещание 19 | 1h | 2021-07-05 09:00 | 2021-07-05 10:00 | 2021-07-05 09:00 | 2021-07-05 10:00 | 1h | 20.05d | start no earlier than 2021-07-05 08:00 | 3D аниматор; Web-дизайнер; Ведущий программист; Мультимедиа-корреспондент; Системный аналитик; Технический писатель; Художник-дизайнер | 7h | 61 | 61 |
| 48 | 11.20 | Совещание 20 | 1h | 2021-07-12 09:00 | 2021-07-12 10:00 | 2021-07-12 09:00 | 2021-07-12 10:00 | 1h | 15.05d | start no earlier than 2021-07-12 08:00 | 3D аниматор; Web-дизайнер; Ведущий программист; Мультимедиа-корреспондент; Системный аналитик; Технический писатель; Художник-дизайнер | 7h | 61 | 61 |
| 49 | 11.21 | Совещание 21 | 1h | 2021-07-19 09:00 | 2021-07-19 10:00 | 2021-07-19 09:00 | 2021-07-19 10:00 | 1h | 10.05d | start no earlier than 2021-07-19 08:00 | 3D аниматор; Web-дизайнер; Ведущий программист; Мультимедиа-корреспондент; Системный аналитик; Технический писатель; Художник-дизайнер | 7h | 61 | 61 |
| 50 | 11.22 | Совещание 22 | 1h | 2021-07-26 09:00 | 2021-07-26 10:00 | 2021-07-26 09:00 | 2021-07-26 10:00 | 1h | 5.05d | start no earlier than 2021-07-26 08:00 | 3D аниматор; Web-дизайнер; Ведущий программист; Мультимедиа-корреспондент; Системный аналитик; Технический писатель; Художник-дизайнер | 7h | 61 | 61 |
| 51 | 11.23 | Совещание 23 | 1h | 2021-08-02 09:00 | 2021-08-02 10:00 | 2021-08-02 09:00 | 2021-08-02 10:00 | 1h | 0.05d | start no earlier than 2021-08-02 08:00 | 3D аниматор; Web-дизайнер; Ведущий программист; Мультимедиа-корреспондент; Системный аналитик; Технический писатель; Художник-дизайнер | 7h | 61 | 61 |
